# Brazo robótico - Plan de tareas

Schedule from Planner, 2026-06-01 to 2026-11-11.

## Calendars

- Default: Mon-Fri 00:00-23:59; Sat-Sun off.
- Default: Mon-Sun 08:00-12:00, 13:00-17:00.
- Default: Mon-Fri 08:00-12:00, 13:00-17:00; Sat-Sun off.

## Schedule

| ID | Task | Type | Duration | Start | Finish | Predecessors | Complete |
| --- | --- | --- | --- | --- | --- | --- | --- |
| 1 | T01 - Definir arquitectura general del sistema. |  | 2d | 2026-06-01 | 2026-06-02 |  | 100% |
| 2 | T02 - Definir arquitectura ROS 2 del brazo robótico. |  | 5d | 2026-06-03 | 2026-06-07 | 1 |  |
| 3 | T03 - Definir modo líder/grabación y modo seguidor/reproducción. |  | 1d | 2026-06-08 | 2026-06-08 | 1, 2 | 50% |
| 4 | T04 - Seleccionar modelo 3D de brazo a utilizar. |  | 1d | 2026-06-03 | 2026-06-03 | 1 | 100% |
| 5 | T05 - Seleccionar componentes principales del sistema. |  | 2d | 2026-06-08 | 2026-06-09 | 1, 2, 4 | 75% |
| 6 | T06 - Diseñar esquemático de PCB de interfaz. |  | 7d | 2026-06-10 | 2026-06-16 | 5 |  |
| 7 | T07 - Rutear PCB de interfaz. |  | 7d | 2026-06-17 | 2026-06-23 | 6 |  |
| 8 | T08 - Comprar componentes para PCB de interfaz. |  | 3d | 2026-06-24 | 2026-06-26 | 6, 7 |  |
| 9 | T09 - Fabricar y validar PCB de interfaz. |  | 14d | 2026-06-27 | 2026-07-10 | 7, 8 |  |
| 10 | T10 - PCB de interfaz validada. | milestone | 0d | 2026-07-10 | 2026-07-10 | 9 |  |
| 11 | T11 - Comprar servomotores. |  | 30d | 2026-06-10 | 2026-07-09 | 5 | 50% |
| 12 | T12 - Comprar placa driver para servomotores. |  | 30d | 2026-06-10 | 2026-07-09 | 5 | 50% |
| 13 | T13 - Comprar fuente de alimentación principal. |  | 5d | 2026-06-10 | 2026-06-14 | 5 |  |
| 14 | T14 - Comprar display LCD 20x4 y botonera. |  | 5d | 2026-06-10 | 2026-06-14 | 5 |  |
| 15 | T15 - Comprar computadora embebida. |  | 30d | 2026-06-10 | 2026-07-09 | 5 |  |
| 16 | T16 - Aprender a utilizar impresora 3D. |  | 15d | 2026-06-01 | 2026-06-15 |  | 100% |
| 17 | T17 - Preparar entorno de desarrollo ROS 2. |  | 15d | 2026-07-10 | 2026-07-24 | 2, 15 | 30% |
| 18 | T18 - Preparar repositorio. |  | 1d | 2026-07-25 | 2026-07-25 | 17 | 75% |
| 19 | T37 - Imprimir piezas del brazo en PLA para prototipo. |  | 7d | 2026-07-10 | 2026-07-16 | 4, 11, 16 |  |
| 20 | T38 - Ensamblar estructura mecánica del brazo. |  | 7d | 2026-07-17 | 2026-07-23 | 11, 19 |  |
| 21 | T39 - Montar electrónica en gabinete. |  | 3d | 2026-07-24 | 2026-07-26 | 20, 10, 11, 12, 13, 14, 15 |  |
| 22 | T40 - Cablear alimentación, servos, controlador, computadora embebida, display y botonera. |  | 1d | 2026-07-27 | 2026-07-27 | 10, 20, 21 |  |
| 23 | T41 - Verificar consumo eléctrico del sistema. |  | 1d | 2026-07-28 | 2026-07-28 | 22 |  |
| 24 | T19 - Modelar brazo para simulación. |  | 5d | 2026-07-25 | 2026-07-29 | 4, 17 |  |
| 25 | T20 - Configurar modelo del brazo en Gazebo. |  | 5d | 2026-07-30 | 2026-08-03 | 24 |  |
| 26 | T21 - Validar movimiento básico en simulación. | milestone | 0d | 2026-08-03 | 2026-08-03 | 25 |  |
| 27 | T22 - Implementar control individual de servomotores. |  | 5d | 2026-07-26 | 2026-07-30 | 10, 11, 12, 17, 18 |  |
| 28 | T23 - Implementar lectura de posición de cada articulación. |  | 5d | 2026-07-31 | 2026-08-04 | 27 |  |
| 29 | T24 - Implementar calibración inicial del brazo. |  | 20d | 2026-08-05 | 2026-08-24 | 28 |  |
| 30 | T25 - Implementar posición Home. |  | 5d | 2026-08-25 | 2026-08-29 | 29 |  |
| 31 | T26 - Implementar movimiento manual del brazo. |  | 5d | 2026-08-30 | 2026-09-03 | 27, 28, 30 |  |
| 32 | T27 - Implementar grabación de trayectorias. |  | 15d | 2026-09-04 | 2026-09-18 | 28, 31 |  |
| 33 | T28 - Implementar almacenamiento persistente de trayectorias. |  | 2d | 2026-09-19 | 2026-09-20 | 32 |  |
| 34 | T29 - Implementar selección de trayectorias guardadas. |  | 2d | 2026-09-21 | 2026-09-22 | 33 |  |
| 35 | T30 - Implementar reproducción de trayectoria seleccionada. |  | 5d | 2026-09-23 | 2026-09-27 | 33, 34 |  |
| 36 | T31 - Implementar eliminación de trayectorias. |  | 1d | 2026-09-23 | 2026-09-23 | 33, 34 |  |
| 37 | T32 - Implementar estados del sistema: listo, grabando, reproduciendo y error. |  | 5d | 2026-09-28 | 2026-10-02 | 32, 35, 36 |  |
| 38 | T33 - Implementar interfaz con display LCD. |  | 10d | 2026-10-03 | 2026-10-12 | 10, 14, 37 |  |
| 39 | T34 - Implementar interfaz con botonera. |  | 10d | 2026-10-03 | 2026-10-12 | 10, 14, 37 |  |
| 40 | T35 - Implementar parada de emergencia o detención segura. |  | 5d | 2026-10-13 | 2026-10-17 | 27, 35, 37, 39 |  |
| 41 | T36 - Configurar arranque automático del sistema. |  | 3d | 2026-10-03 | 2026-10-05 | 15, 17, 18, 37 |  |
| 42 | T42 - Probar manipulación de objetos livianos. |  | 1d | 2026-10-18 | 2026-10-18 | 35, 40, 20, 22, 23 |  |
| 43 | T43 - Probar repetibilidad de trayectorias. |  | 1d | 2026-10-19 | 2026-10-19 | 42 |  |
| 44 | T44 - Probar precisión de movimiento. |  | 1d | 2026-10-20 | 2026-10-20 | 42, 43 |  |
| 45 | T45 - Prueba de integración: colocar anillo en dedo impreso en 3D. |  | 1d | 2026-10-21 | 2026-10-21 | 44 |  |
| 46 | T46 - Corregir fallas detectadas en pruebas. |  | 7d | 2026-10-22 | 2026-10-28 | 42, 43, 44, 45 |  |
| 47 | T47 - Validar manipulación de objetos livianos. | milestone | 0d | 2026-10-28 | 2026-10-28 | 42, 46 |  |
| 48 | T48 - Validar repetibilidad de trayectorias. | milestone | 0d | 2026-10-28 | 2026-10-28 | 43, 46 |  |
| 49 | T49 - Validar precisión de movimiento. | milestone | 0d | 2026-10-28 | 2026-10-28 | 44, 46 |  |
| 50 | T50 - Validar prueba de integración. | milestone | 0d | 2026-10-28 | 2026-10-28 | 45, 46 |  |
| 51 | T51 - Migrar piezas finales a PETG si corresponde. |  | 14d | 2026-10-29 | 2026-11-11 | 16, 46 |  |
| 52 | T52 - Documentar instalación, uso y operación del sistema. |  | 10d | 2026-10-29 | 2026-11-07 | 38, 39, 41, 46, 50 |  |
| 53 | T53 - Documentar resultados de pruebas y validación final. |  | 10d | 2026-10-29 | 2026-11-07 | 23, 42, 43, 44, 45, 46, 47, 48, 49, 50 |  |
| 54 | T54 - Preparar presentación final (demo). |  | 3d | 2026-11-08 | 2026-11-10 | 52, 53 |  |
| 55 | T55 - Entrega final del proyecto. | milestone | 0d | 2026-11-10 | 2026-11-10 | 54 |  |

Notes:
- 1: Fase: Diseño. Criterio de cierre: Diagrama o descripción de arquitectura general aprobada.
- 2: Fase: Diseño. Criterio de cierre: Nodos, tópicos, servicios y responsabilidades definidos.
- 3: Fase: Diseño. Criterio de cierre: Flujo de operación de ambos modos documentado.
- 4: Fase: Diseño. Criterio de cierre: Modelo de brazo definido y compatible con el alcance del proyecto.
- 5: Fase: Diseño. Criterio de cierre: Lista de componentes principales definida: servos, driver, fuente, computadora embebida, display y botonera.
- 6: Fase: Diseño. Criterio de cierre: Esquemático del PCB de interfaz terminado.
- 7: Fase: Diseño. Criterio de cierre: Layout de PCB de interfaz terminado.
- 8: Fase: Compras. Criterio de cierre: Componentes electrónicos disponibles para el ensamblado.
- 9: Fase: Fabricación. Criterio de cierre: PCB de interfaz finalizada.
- 10: Fase: Validación. Criterio de cierre: PCB de interfaz fabricada, ensamblada y validada eléctricamente.
- 11: Fase: Compras. Criterio de cierre: Servomotores disponibles para el proyecto.
- 12: Fase: Compras. Criterio de cierre: Driver disponible y compatible con los servomotores seleccionados.
- 13: Fase: Compras. Criterio de cierre: Fuente disponible y acorde al consumo previsto del sistema.
- 14: Fase: Compras. Criterio de cierre: Interfaz física disponible para integración.
- 15: Fase: Compras. Criterio de cierre: Computadora embebida disponible para ejecutar ROS 2 e integrar el sistema.
- 16: Fase: Entorno. Criterio de cierre: Impresora 3D instalada, calibrada y probada con impresiones simples.
- 17: Fase: Entorno. Criterio de cierre: Entorno ROS 2 instalado y probado.
- 18: Fase: Entorno. Criterio de cierre: Estructura de paquetes, carpetas y documentación base creada.
- 19: Fase: Fabricación. Criterio de cierre: Piezas impresas y listas para ensamblaje.
- 20: Fase: Fabricación. Criterio de cierre: Estructura del brazo armada físicamente.
- 21: Fase: Integración. Criterio de cierre: Electrónica montada y organizada en gabinete.
- 22: Fase: Integración. Criterio de cierre: Sistema cableado y listo para pruebas eléctricas.
- 23: Fase: Consumo. Criterio de cierre: Consumo medido o estimado y comparado con la capacidad de la fuente.
- 24: Fase: Simulación. Criterio de cierre: Modelo del brazo disponible para ROS 2/Gazebo.
- 25: Fase: Simulación. Criterio de cierre: Brazo cargado correctamente en Gazebo.
- 26: Fase: Simulación. Criterio de cierre: Movimiento básico verificado en entorno simulado.
- 27: Fase: Actuadores. Criterio de cierre: Cada servomotor puede recibir comandos individuales desde el sistema.
- 28: Fase: Actuadores. Criterio de cierre: Posición de cada articulación disponible para el sistema.
- 29: Fase: Calibración. Criterio de cierre: Procedimiento de calibración ejecutable.
- 30: Fase: Calibración. Criterio de cierre: Posición de referencia definida y alcanzable.
- 31: Fase: Manual. Criterio de cierre: El brazo puede moverse manualmente para enseñanza.
- 32: Fase: Trayectorias. Criterio de cierre: Trayectoria registrada con posiciones y tiempos.
- 33: Fase: Trayectorias. Criterio de cierre: Trayectorias guardadas y recuperables tras reinicio.
- 34: Fase: Trayectorias. Criterio de cierre: Trayectoria seleccionable desde el sistema.
- 35: Fase: Trayectorias. Criterio de cierre: Trayectoria almacenada reproducida correctamente.
- 36: Fase: Trayectorias. Criterio de cierre: Trayectorias almacenadas pueden borrarse correctamente.
- 37: Fase: Estados. Criterio de cierre: Estados visibles y coherentes con la operación real.
- 38: Fase: UI. Criterio de cierre: Display muestra estados, opciones y mensajes principales del sistema.
- 39: Fase: UI. Criterio de cierre: Botonera permite operar funciones principales: grabar, reproducir, seleccionar y borrar.
- 40: Fase: Seguridad. Criterio de cierre: Ejecución detenible ante una condición anormal o acción del usuario.
- 41: Fase: Inicialización. Criterio de cierre: Servicios principales inician al encender el equipo.
- 42: Fase: Pruebas. Criterio de cierre: El brazo agarra, mueve y suelta objetos livianos.
- 43: Fase: Pruebas. Criterio de cierre: Misma trayectoria ejecutada varias veces con resultado consistente.
- 44: Fase: Pruebas. Criterio de cierre: Precisión evaluada contra el criterio definido para el proyecto.
- 45: Fase: Pruebas. Criterio de cierre: Prueba final realizada con resultado satisfactorio.
- 46: Fase: Correcciones. Criterio de cierre: Fallas críticas corregidas y pruebas repetidas.
- 47: Fase: Validación. Criterio de cierre: Prueba final realizada con resultado satisfactorio.
- 48: Fase: Validación. Criterio de cierre: Prueba final realizada con resultado satisfactorio.
- 49: Fase: Validación. Criterio de cierre: Prueba final realizada con resultado satisfactorio.
- 50: Fase: Validación. Criterio de cierre: Prueba final realizada con resultado satisfactorio.
- 51: Fase: Fabricación final. Criterio de cierre: Piezas finales impresas o decisión documentada de mantener PLA.
- 52: Fase: Documentación. Criterio de cierre: Manual o sección documental de instalación y uso completa.
- 53: Fase: Documentación. Criterio de cierre: Informe de pruebas y validación final documentado.
- 54: Fase: Presentación. Criterio de cierre: Presentación, demo y material de exposición preparados.
- 55: Fase: Entrega Final. Criterio de cierre: Proyecto entregado con documentación, resultados y validación final completos.
